# Planificación

Schedule from MS Project, 2015-03-02 to 2015-12-08, status date 2015-03-01, costs in €.
Microsoft

## Calendars

- Rexia: Mon-Fri 08:30-14:00; Sat off; Sun 08:30-14:00. Exceptions (off unless hours are given): 2015-05-01 (1 de Mayo, recurring).

## Resources

| Resource | Rate | Cost per use |
| --- | --- | --- |
| Ordenador | 700 |  |
| Analista | 18 |  |
| Desarrollador | 13 |  |
| Licencia de Enterprise Architect | 160 |  |
| Jefe de Proyecto | 25 |  |
| Diseñador UX | 13 |  |
| Especialista QA/QC |  | 30 |
| Formador TIC | 12.5 |  |
| Técnico especialista en HW & SW | 10 |  |

## Schedule

| ID | WBS | Task | Type | Duration | Start | Finish | Predecessors | Baseline start | Baseline finish | Baseline duration | Resources | Work | Cost | Baseline cost |
| --- | --- | --- | --- | --- | --- | --- | --- | --- | --- | --- | --- | --- | --- | --- |
| 1 | 1 | **Rexia** |  | 165.53d | 2015-03-02 | 2015-12-08 |  | 2015-03-02 | 2015-12-08 | 165.53d | Ordenador [400%]; Licencia de Enterprise Architect | 1157.5h | 16,319.92 | 16,319.92 |
| 2 | 1.1 | **Recopilación de información** |  | 17.5d | 2015-03-02 | 2015-03-31 |  | 2015-03-02 | 2015-03-31 | 17.5d |  | 78.25h | 1,545.02 | 1,545.02 |
| 3 | 1.1.1 | Reunión inicial con el cliente | manual | 1d | 2015-03-02 | 2015-03-03 |  | 2015-03-02 | 2015-03-03 | 1d | Jefe de Proyecto | 8h | 200 | 200 |
| 4 | 1.1.2 | Análisis de viabilidad del proyecto | manual | 1.5d | 2015-03-03 | 2015-03-05 | 3 | 2015-03-03 | 2015-03-05 | 1.5d | Jefe de Proyecto [50%]; Analista [50%] | 12h | 258 | 258 |
| 5 | 1.1.3 | Descubrir el proceso de negocio del cliente | manual | 6.19d | 2015-03-05 | 2015-03-22 | 4 | 2015-03-05 | 2015-03-22 | 6.19d | Analista [50%] | 28.75h | 517.51 | 517.51 |
| 6 | 1.1.4 | Descubrir las necesidades o requerimientos del sistema | manual | 3d | 2015-03-22 | 2015-03-30 | 5 | 2015-03-22 | 2015-03-30 | 3d | Analista | 24h | 432 | 432 |
| 7 | 1.1.5 | Presentación al cliente de los resultados | manual | 5.5h | 2015-03-30 | 2015-03-31 | 6 | 2015-03-30 | 2015-03-31 | 5.5h | Jefe de Proyecto | 5.5h | 137.5 | 137.5 |
| 8 | 1.2 | **Análisis** |  | 13.56d | 2015-03-31 | 2015-04-23 | 2 | 2015-03-31 | 2015-04-23 | 13.56d |  | 83.5h | 1,559.03 | 1,559.03 |
| 9 | 1.2.1 | Análisis de requisitos | manual | 3d | 2015-03-31 | 2015-04-06 | 7 | 2015-03-31 | 2015-04-06 | 3d | Analista | 24h | 432 | 432 |
| 10 | 1.2.2 | Análisis del sistema actual disponible y de las posibles modificaciones | manual | 4.38d | 2015-04-06 | 2015-04-14 | 9 | 2015-04-06 | 2015-04-14 | 4.38d | Analista [50%] | 17.5h | 315 | 315 |
| 11 | 1.2.3 | Análisis funcional (Casos de uso) | manual | 2d | 2015-04-14 | 2015-04-17 | 10 | 2015-04-14 | 2015-04-17 | 2d | Analista | 16h | 288.03 | 288.03 |
| 12 | 1.2.4 | Documentación (Fase Análisis) | manual | 3d | 2015-04-17 | 2015-04-22 | 11 | 2015-04-17 | 2015-04-22 | 3d | Analista [75%]; Jefe de Proyecto [25%] | 24h | 474 | 474 |
| 13 | 1.2.5 | Presentación al cliente de solución propuesta | manual | 2h | 2015-04-22 | 2015-04-23 | 12 | 2015-04-22 | 2015-04-23 | 2h | Jefe de Proyecto | 2h | 50 | 50 |
| 14 | 1.3 | Aprobación de la propuesta por el Cliente | milestone, manual | 15min | 2015-04-23 | 2015-04-23 | 8 | 2015-04-23 | 2015-04-23 | 15min | Jefe de Proyecto | 0.25h | 6.25 | 6.25 |
| 15 | 1.4 | QA Análisis | manual | 5d | 2015-04-23 | 2015-05-03 | 14 | 2015-04-23 | 2015-05-03 | 5d | Especialista QA/QC | 40h | 30 | 30 |
| 16 | 1.5 | **Diseño** |  | 13d | 2015-05-03 | 2015-05-24 | 15 | 2015-05-03 | 2015-05-24 | 13d |  | 107.2h | 1,912 | 1,912 |
| 17 | 1.5.1 | Diseño del Modelo de Clases | manual | 3d | 2015-05-03 | 2015-05-07 |  | 2015-05-03 | 2015-05-07 | 3d | Analista | 24h | 432 | 432 |
| 18 | 1.5.2 | Diseño del Modelo de Objetos | manual | 3d | 2015-05-07 | 2015-05-12 | 17 | 2015-05-07 | 2015-05-12 | 3d | Analista | 24h | 432 | 432 |
| 19 | 1.5.3 | Diseño del Modelo de Datos | manual | 3d | 2015-05-12 | 2015-05-18 | 18 | 2015-05-12 | 2015-05-18 | 3d | Analista | 24h | 432 | 432 |
| 20 | 1.5.4 | Documentación (Fase Diseño) | manual | 4d | 2015-05-18 | 2015-05-24 | 19 | 2015-05-18 | 2015-05-24 | 4d | Analista [75%]; Diseñador UX [25%]; Jefe de Proyecto [10%] | 35.2h | 616 | 616 |
| 21 | 1.6 | QA Diseño | manual | 2d | 2015-05-24 | 2015-05-27 | 20 | 2015-05-24 | 2015-05-27 | 2d | Especialista QA/QC | 16h | 30 | 30 |
| 22 | 1.7 | **Desarrollo / Codificación** |  | 46d | 2015-05-19 | 2015-08-04 | 21 | 2015-05-19 | 2015-08-04 | 46d |  | 372.8h | 4,904 | 4,904 |
| 23 | 1.7.1 | Generación de código | manual | 30d | 2015-05-19 | 2015-07-08 |  | 2015-05-19 | 2015-07-08 | 30d | Desarrollador | 240h | 3,120 | 3,120 |
| 24 | 1.7.2 | Generación de interfaz | manual | 10d | 2015-07-08 | 2015-07-26 | 23 | 2015-07-08 | 2015-07-26 | 10d | Diseñador UX | 80h | 1,040 | 1,040 |
| 25 | 1.7.3 | Documentación (Fase Desarrollo) | manual | 6d | 2015-07-26 | 2015-08-04 | 24 | 2015-07-26 | 2015-08-04 | 6d | Desarrollador [75%]; Diseñador UX [25%]; Jefe de Proyecto [10%] | 52.8h | 744 | 744 |
| 26 | 1.8 | QA Desarrollo | manual | 5d | 2015-08-04 | 2015-08-14 | 25 | 2015-08-04 | 2015-08-14 | 5d | Especialista QA/QC | 40h | 30 | 30 |

Notes:
- 13: Aceptación del documento sobre Especificaciones de Requisitos de Software (ERS)

| ID | WBS | Task | Type | Duration | Start | Finish | Predecessors | Baseline start | Baseline finish | Baseline duration | Resources | Work | Cost | Baseline cost |
| --- | --- | --- | --- | --- | --- | --- | --- | --- | --- | --- | --- | --- | --- | --- |
| 27 | 1.9 | **Pruebas** |  | 41d | 2015-08-14 | 2015-10-23 | 26 | 2015-08-14 | 2015-10-23 | 41d |  | 234.75h | 1,297.38 | 1,297.38 |
| 28 | 1.9.1 | Tests unitarios | manual | 13d | 2015-08-14 | 2015-09-09 | 26 | 2015-08-14 | 2015-09-09 | 13d | Especialista QA/QC; Desarrollador [50%]; Diseñador UX [25%] | 139h | 790.5 | 790.5 |
| 29 | 1.9.2 | Tests de integración | manual | 7d | 2015-09-09 | 2015-09-21 | 28 | 2015-09-09 | 2015-09-21 | 7d | Especialista QA/QC | 56h | 30 | 30 |
| 30 | 1.9.3 | Documentación (Fase Pruebas) | manual | 9.94d | 2015-09-21 | 2015-10-23 | 29 | 2015-09-21 | 2015-10-23 | 9.94d | Técnico especialista en HW & SW [25%]; Desarrollador [25%]; Formador TIC [50%] | 39.75h | 476.88 | 476.88 |
| 31 | 1.10 | Aprobación final del cliente | milestone, manual | 45min | 2015-10-23 | 2015-10-23 | 30 | 2015-10-23 | 2015-10-23 | 45min | Jefe de Proyecto | 0.75h | 18.75 | 18.75 |
| 32 | 1.11 | **Implementación** |  | 27d | 2015-10-23 | 2015-12-08 | 31 | 2015-10-23 | 2015-12-08 | 27d |  | 184h | 2,027.5 | 2,027.5 |
| 33 | 1.11.1 | Instalación del sistema HW & SW | manual | 4d | 2015-10-23 | 2015-11-12 | 31 | 2015-10-23 | 2015-11-12 | 4d | Técnico especialista en HW & SW | 32h | 320 | 320 |
| 34 | 1.11.2 | Validación del sistema | manual | 10d | 2015-11-17 | 2015-12-08 | 33 | 2015-11-17 | 2015-12-08 | 10d | Especialista QA/QC [25%]; Técnico especialista en HW & SW [75%] | 40h | 307.5 | 307.5 |
| 35 | 1.11.3 | Formación | manual | 14d | 2015-10-23 | 2015-11-16 | 33SS | 2015-10-23 | 2015-11-16 | 14d | Formador TIC | 112h | 1,400 | 1,400 |
| 36 | 1.12 | Mantenimiento y Garantía | milestone, manual | 0d | 2015-12-08 | 2015-12-08 | 32 | 2015-12-08 | 2015-12-08 | 0d | Técnico especialista en HW & SW |  |  |  |

Notes:
- 30: Se procede a consolidar la documentación que se ha ido generando hasta el momento y se completa aquella que falte y que es necesaria entregar al cliente final. / Se debe generar la documentación técnica final del sistema así como la documentación que posteriormente pueda requerirse para la formación.
